# 进度安排

Schedule from MS Project, 2010-07-01 to 2010-09-28, A marks actual dates.
ZhuHai

## Calendars

- 标准: Mon-Fri 08:00-12:00, 13:00-17:00; Sat-Sun off. Exceptions (off unless hours are given): 2010-07-17 08:00-12:00, 13:00-17:00, 2010-07-24 to 2010-07-25 08:00-12:00, 13:00-17:00, 2010-08-14 08:00-12:00, 13:00-17:00, 2010-08-21 08:00-12:00, 13:00-17:00.

## Resources

| Resource |
| --- |
| 严睿 |
| 沈铖 |
| 廖荣朝 |
| 李革 |
| 安维亭 |
| 韦俊武 |
| 刘玉兵 |

## Schedule

| ID | WBS | Task | Duration | Start | Finish | Predecessors | Complete | Remaining | Total slack | Constraint | Resources | Work | Actual work |
| --- | --- | --- | --- | --- | --- | --- | --- | --- | --- | --- | --- | --- | --- |
| 1 | 1 | **第一期开始(基础功能)** | 39.5d | 2010-07-01 A | 2010-08-19 |  | 88% | 4.86d | 28.5d |  |  | 528.48h | 455.68h |
| 2 | 1.1 | 需求调研 | 10.94d | 2010-07-01 A | 2010-07-15 A |  | 100% |  |  | finish no earlier than 2010-07-15 | 严睿 | 87.5h | 87.5h |
| 3 | 1.2 | 数据库设计 | 3d | 2010-07-06 A | 2010-07-09 A | 2SS | 100% |  |  | start no earlier than 2010-07-06 | 严睿 | 24h | 24h |
| 4 | 1.3 | 框架搭建 | 1d | 2010-07-14 A | 2010-07-15 A | 3SS | 100% |  |  | start no earlier than 2010-07-14 | 严睿 | 8h | 8h |
| 5 | 1.4 | **代码实现** | 30.5d | 2010-07-14 A | 2010-08-19 |  | 82% | 5.38d | 28.5d |  |  | 408.98h | 336.18h |
| 6 | 1.4.1 | **交易管理** | 8d | 2010-07-15 A | 2010-07-24 |  | 99% | 0.09d | 50d |  |  | 88h | 87.2h |
| 7 | 1.4.1.1 | **平台公司帐号管理** | 4d | 2010-07-15 A | 2010-07-20 |  | 99% | 0.03d | 54d |  | 廖荣朝 | 64h | 63.6h |
| 8 | 1.4.1.1.1 | 平台管理 | 0.5d | 2010-07-15 A | 2010-07-15 A | 4 | 100% |  |  | start no earlier than 2010-07-15 | 廖荣朝 | 4h | 4h |
| 9 | 1.4.1.1.2 | 公司管理 | 0.5d | 2010-07-15 A | 2010-07-16 A | 8 | 100% |  |  | start no earlier than 2010-07-15 | 廖荣朝 | 4h | 4h |
| 10 | 1.4.1.1.3 | 支付工具管理 | 0.5d | 2010-07-16 A | 2010-07-16 A | 9 | 100% |  |  | start no earlier than 2010-07-15 | 廖荣朝 | 4h | 4h |
| 11 | 1.4.1.1.4 | 帐号管理 | 0.5d | 2010-07-16 A | 2010-07-17 A | 10 | 100% |  |  | start no earlier than 2010-07-16 | 廖荣朝 | 4h | 4h |
| 12 | 1.4.1.1.5 | 客户管理 | 0.5d | 2010-07-17 A | 2010-07-17 | 11 | 95% | 0.03d | 52.5d | start no earlier than 2010-07-16 | 廖荣朝 | 4h | 3.8h |
| 13 | 1.4.1.1.6 | 平台公司帐号管理 | 1.5d | 2010-07-17 A | 2010-07-20 A | 12 | 100% |  |  | start no earlier than 2010-07-17 | 廖荣朝 | 12h | 12h |
| 14 | 1.4.1.2 | **结算管理** | 3d | 2010-07-21 A | 2010-07-24 |  | 98% | 0.05d | 50d |  |  | 24h | 23.6h |
| 15 | 1.4.1.2.1 | 结算查询 | 2d | 2010-07-21 A | 2010-07-23 A | 4 | 100% |  |  | finish no earlier than 2010-07-21 | 廖荣朝 | 16h | 16h |
| 16 | 1.4.1.2.2 | B2C收回票款 | 1d | 2010-07-23 A | 2010-07-24 | 13 | 95% | 0.05d | 47d | start no earlier than 2010-07-23 | 廖荣朝 | 8h | 7.6h |
| 17 | 1.4.2 | **订单管理** | 23.5d | 2010-07-15 A | 2010-08-12 A |  | 100% |  |  |  |  | 240.97h | 240.97h |
| 18 | 1.4.2.1 | **PNR接口** | 8.18d | 2010-07-15 A | 2010-07-24 A |  | 100% |  |  |  |  | 100.97h | 100.97h |
| 19 | 1.4.2.1.1 | **订单提取接口** | 8.18d | 2010-07-15 A | 2010-07-24 A |  | 100% |  |  |  | 沈铖 | 100.97h | 100.97h |
| 20 | 1.4.2.1.1.1 | 接口开发 | 2.94d | 2010-07-15 A | 2010-07-23 A | 15 | 100% |  |  | start no earlier than 2010-07-15 | 沈铖 | 23.5h | 23.5h |
| 21 | 1.4.2.1.1.2 | 接口调试 | 1.5d | 2010-07-19 A | 2010-07-24 A | 20 | 100% |  |  |  | 沈铖 | 12h | 12h |
| 22 | 1.4.2.2 | **机票订单管理** | 21d | 2010-07-17 A | 2010-08-12 A |  | 100% |  |  |  |  | 140h | 140h |
| 23 | 1.4.2.2.1 | 买卖订单录入/处理 | 1.5d | 2010-07-17 A | 2010-07-20 A | 12, 21 | 100% |  |  | start no earlier than 2009-03-09 | 沈铖 | 12h | 12h |
| 24 | 1.4.2.2.2 | B2C买卖订单录入/处理 | 1d | 2010-07-24 A | 2010-07-25 A | 23 | 100% |  |  | start no earlier than 2010-07-24 | 沈铖 | 8h | 8h |
| 25 | 1.4.2.2.3 | 买卖订单处理(流程) | 2d | 2010-07-26 A | 2010-07-28 A | 24 | 100% |  |  | start no earlier than 2010-07-26 | 沈铖 | 16h | 16h |
| 26 | 1.4.2.2.4 | 团队订单录入/处理 | 3d | 2010-07-27 A | 2010-07-30 A | 25 | 100% |  |  | finish no earlier than 2010-07-29 | 廖荣朝 | 24h | 24h |
| 27 | 1.4.2.2.5 | 退废订单录入/处理 | 2d | 2010-07-30 A | 2010-08-03 A | 26 | 100% |  |  | start no earlier than 2010-07-26 | 沈铖 | 16h | 16h |
| 28 | 1.4.2.2.6 | 改签订单录入/处理 | 1d | 2010-08-04 A | 2010-08-05 A | 27 | 100% |  |  | start no earlier than 2010-07-28 | 沈铖 | 8h | 8h |
| 29 | 1.4.2.2.7 | 手工录入编辑机票订单 | 2d | 2010-08-05 A | 2010-08-09 A | 28 | 100% |  |  | finish no earlier than 2010-08-07 | 沈铖 | 16h | 16h |
| 30 | 1.4.2.2.8 | 团队订单利润统计 | 2d | 2010-08-09 A | 2010-08-11 A | 29 | 100% |  |  | start no earlier than 2010-07-29 | 廖荣朝 | 16h | 16h |
| 31 | 1.4.2.2.9 | 原始销售报表 | 1.5d | 2010-08-11 A | 2010-08-12 A | 30 | 100% |  |  | start no earlier than 2010-07-29 | 沈铖; 廖荣朝 | 24h | 24h |

| ID | WBS | Task | Type | Duration | Start | Finish | Predecessors | Complete | Remaining | Total slack | Free slack | Constraint | Resources | Work | Actual work |
| --- | --- | --- | --- | --- | --- | --- | --- | --- | --- | --- | --- | --- | --- | --- | --- |
| 32 | 1.4.3 | **系统管理** |  | 1.5d | 2010-07-14 A | 2010-07-15 A |  | 100% |  |  |  |  |  | 8h | 8h |
| 33 | 1.4.3.1 | 用户管理 |  | 0.5d | 2010-07-14 A | 2010-07-14 A |  | 100% |  |  |  | start no earlier than 2010-07-14 | 严睿 | 4h | 4h |
| 34 | 1.4.3.2 | 操作日志管理 |  | 0.5d | 2010-07-15 A | 2010-07-15 A | 33 | 100% |  |  |  | start no earlier than 2010-07-15 | 严睿 | 4h | 4h |
| 35 | 1.4.4 | 第一期测试 |  | 6d | 2010-08-12 | 2010-08-19 | 31 |  |  | 25.5d |  | start no earlier than 2010-08-05 | 严睿; 安维亭 | 72h |  |
| 36 | 2 | 第一期结束 | milestone | 0d | 2010-08-10 | 2010-08-10 |  |  |  | 33.94d |  | start no earlier than 2010-08-10 |  |  |  |
| 37 | 3 | **第二期开始(替换旧系统)** |  | 21.94d | 2010-08-23 A | 2010-09-21 |  | 88% | 2.66d | 4.06d |  |  |  | 934.5h | 804.18h |
| 38 | 3.1 | **上期项目测试反馈** |  | 9.94d | 2010-08-23 A | 2010-09-04 A |  | 100% |  |  |  |  | 严睿; 沈铖; 廖荣朝; 安维亭 | 573h | 573h |
| 39 | 3.1.1 | 第一期项目订单处理流程测试 |  | 6d | 2010-08-23 A | 2010-08-31 A |  | 100% |  |  |  | finish no earlier than 2010-07-15 | 严睿; 沈铖; 廖荣朝; 安维亭 | 192h | 192h |
| 40 | 3.1.2 | 订单处理流程问题修改 |  | 3.94d | 2010-08-31 A | 2010-09-04 A | 39 | 100% |  |  |  | finish no earlier than 2010-07-15 | 沈铖; 廖荣朝 | 63h | 63h |
| 41 | 3.2 | **代码实现** |  | 8.94d | 2010-09-07 A | 2010-09-17 |  | 91% | 0.83d | 6.06d |  |  | 沈铖 | 281.5h | 231.18h |
| 42 | 3.2.1 | **常用报表** |  | 6.94d | 2010-09-07 A | 2010-09-15 |  | 92% | 0.57d | 8.06d |  |  | 沈铖 | 143.5h | 131.76h |
| 43 | 3.2.1.1 | 销售报表 |  | 4d | 2010-09-07 A | 2010-09-13 | 40 | 95% | 0.2d | 10.61d | 3d | finish no earlier than 2010-07-15 | 沈铖 | 32h | 30.4h |
| 44 | 3.2.1.2 | 团队销售报表 |  | 4d | 2010-09-07 A | 2010-09-13 |  | 90% | 0.4d | 11d |  | finish no earlier than 2010-09-10 | 廖荣朝 | 32h | 28.8h |
| 45 | 3.2.1.3 | 团队未返代理费报表 |  | 3d | 2010-09-11 A | 2010-09-15 |  | 90% | 0.3d | 6.06d | 0d | finish no earlier than 2010-07-15 | 廖荣朝 | 24h | 21.6h |
| 46 | 3.2.2 | 按业务需求修改业务菜单 |  | 1.94d | 2010-09-16 A | 2010-09-17 | 43 | 80% | 0.39d | 6.06d |  | start no earlier than 2010-09-16 | 沈铖 | 15.5h | 12.4h |
| 47 | 3.2.3 | 团队票订单处理流程 |  | 2d | 2010-09-16 A | 2010-09-17 | 45 | 80% | 0.4d | 6.06d |  | finish no earlier than 2010-07-15 | 廖荣朝 | 16h | 12.8h |
| 48 | 3.2.4 | 权限管理 |  | 1.94d | 2010-09-16 A | 2010-09-17 A |  | 100% |  |  |  | start no earlier than 2010-09-16 | 李革 | 15.5h | 15.5h |
| 49 | 3.2.5 | 用户分组管理 |  | 0.5d | 2010-09-16 A | 2010-09-16 A |  | 100% |  |  |  | start no earlier than 2010-09-16 | 严睿 | 4h | 4h |
| 50 | 3.2.6 | 升级操作员收付款报表 |  | 1.94d | 2010-09-16 A | 2010-09-17 |  | 95% | 0.1d | 6.06d |  | start no earlier than 2010-09-16 | 严睿 | 15.5h | 14.72h |
| 51 | 3.3 | 正式上线前集成测试 |  | 2d | 2010-09-20 | 2010-09-21 | 48 |  |  | 3.12d | 0.06d | finish no earlier than 2010-07-15 | 严睿; 沈铖; 廖荣朝; 李革; 安维亭 | 80h |  |
| 52 | 4 | 第二期结束 |  | 0.94d | 2010-09-22 | 2010-09-22 | 51 |  |  | 3.06d |  | start no earlier than 2010-09-22 |  |  |  |
| 53 | 5 | **第三期开始(自动对账)** |  | 4d | 2010-09-22 | 2010-09-28 |  |  |  | 0d |  |  |  |  |  |
| 54 | 5.1 | **外部报表导入** |  | 4d | 2010-09-22 | 2010-09-28 |  |  |  | 0d |  |  |  |  |  |
| 55 | 5.1.1 | 银行/支付平台 | milestone | 0d | 2010-09-28 | 2010-09-28 |  |  |  | 0d |  | start no earlier than 2010-09-28 |  |  |  |
| 56 | 5.1.2 | 航空公司/交易平台 |  | 0.94d | 2010-09-22 | 2010-09-22 |  |  |  | 3.06d |  | start no earlier than 2010-09-22 |  |  |  |
| 57 | 5.2 | 第三期结束 | milestone | 0d | 2010-09-22 | 2010-09-22 |  |  |  | 4d |  | start no earlier than 2010-09-22 |  |  |  |

| ID | WBS | Task | Type | Duration | Start | Finish | Predecessors | Complete | Remaining | Total slack | Free slack | Constraint | Resources | Work | Actual work |
| --- | --- | --- | --- | --- | --- | --- | --- | --- | --- | --- | --- | --- | --- | --- | --- |
| 58 | 6 | **第四期开始(客户管理)** |  | 0.94d | 2010-09-22 | 2010-09-22 |  |  |  | 3.06d |  |  |  |  |  |
| 59 | 6.1 | 统一客户管理 |  | 0.94d | 2010-09-22 | 2010-09-22 |  |  |  | 3.06d |  | start no earlier than 2010-09-22 |  |  |  |
| 60 | 6.2 | 集成呼叫中心 |  | 0.94d | 2010-09-22 | 2010-09-22 |  |  |  | 3.06d |  | start no earlier than 2010-09-22 |  |  |  |
| 61 | 6.3 | 集成信用圈 |  | 0.94d | 2010-09-22 | 2010-09-22 |  |  |  | 3.06d |  | start no earlier than 2010-09-22 |  |  |  |
| 62 | 7 | 第四期结束 |  | 0.94d | 2010-09-22 | 2010-09-22 |  |  |  | 3.06d |  | start no earlier than 2010-09-22 |  |  |  |
| 63 | 8 | **第五期开始（政策管理）** |  | 18.41d | 2010-08-06 A | 2010-08-30 |  | 14% | 15.85d | 20.59d |  |  |  | 215.5h | 27.75h |
| 64 | 8.1 | 需求调研 |  | 4.94d | 2010-08-06 A | 2010-08-17 | 65 | 50% | 2.47d | 20.59d | 0d | finish no earlier than 2010-08-10 | 严睿; 李革 | 55.5h | 19.75h |
| 65 | 8.2 | 数据库设计 |  | 1d | 2010-08-13 | 2010-08-13 |  |  |  | 20.59d | 0d | finish no earlier than 2010-08-13 | 严睿 | 8h |  |
| 66 | 8.3 | 航空公司政策管理 |  | 3d | 2010-08-14 | 2010-08-17 | 65 |  |  | 28.06d | 5.06d | finish no earlier than 2010-08-17 | 沈铖 | 24h |  |
| 67 | 8.4 | 平台登录帐号管理 |  | 1d | 2010-08-17 A | 2010-08-18 A | 65 | 100% |  |  |  | start no earlier than 2010-08-17 | 廖荣朝 | 8h | 8h |
| 68 | 8.5 | 交易平台政策管理 |  | 2d | 2010-08-24 | 2010-08-26 | 66, 69 |  |  | 23d |  | finish no earlier than 2010-08-17 | 沈铖 | 16h |  |
| 69 | 8.6 | 政策提醒 |  | 3d | 2010-08-20 | 2010-08-24 |  |  |  | 23d | 0d | start no earlier than 2010-08-20 | 沈铖 | 24h |  |
| 70 | 8.7 | 政策抓取控件 |  | 10d | 2010-08-17 | 2010-08-30 | 64 |  |  | 20.59d |  | finish no earlier than 2010-08-21 | 刘玉兵 | 80h |  |
| 71 | 9 | 第五期结束 | milestone | 0d | 2010-09-22 | 2010-09-22 |  |  |  | 4d |  | start no earlier than 2010-09-22 |  |  |  |
